# WellQC Subsurface Log QA Schedule

How a schedule from MS Project XML changed from version to version. A marks actual dates.

## Version 1 (saved 2026-10-27, file wellqc_project_schedule.xml)

Note of the change: docs(schedule): update 14-week project schedule and add Trello Kanban export suite

| ID | WBS | Task | Duration | Start | Finish | Predecessors | Complete |
| --- | --- | --- | --- | --- | --- | --- | --- |
| 1 | 1 | **WellQC Platform Development** | 70d | 2026-07-20 | 2026-10-23 |  | 98% |
| 2 | 1.1 | **Sprint 1: Discovery, Architecture & Core Stack** | 10d | 2026-07-20 | 2026-07-31 |  | 100% |
| 3 |  | Petrophysical Domain Modeling & Curve Physical Limits | 5d | 2026-07-20 | 2026-07-24 |  | 100% |
| 4 |  | LAS 2.0 Parser Engine & Line Splitter Validation | 6d | 2026-07-22 | 2026-07-29 | 3 | 100% |
| 5 |  | Next.js 15 App Shell, Navigation & Design System | 7d | 2026-07-20 | 2026-07-28 |  | 100% |
| 6 |  | Database Schema Design & Prisma Setup | 7d | 2026-07-22 | 2026-07-30 | 3 | 100% |
| 7 |  | CI/CD Pipeline Setup & Repository Governance | 5d | 2026-07-20 | 2026-07-25 |  | 100% |
| 8 |  | Milestone: Core Architecture & Ingestion Proof-of-Concept | 0d | 2026-07-31 | 2026-07-31 | 4, 5, 6, 7 | 100% |
| 9 | 1.2 | **Sprint 2: Foundation, Auth & Multi-Tenant Database** | 10d | 2026-08-03 | 2026-08-14 | 8 | 100% |
| 10 |  | Multi-Tenant PostgreSQL Architecture on Neon | 5d | 2026-08-03 | 2026-08-07 | 8 | 100% |
| 11 |  | Authentication Engine, Session Tokens & Scrypt Hashing | 5d | 2026-08-05 | 2026-08-11 | 10 | 100% |
| 12 |  | Mnemonic Dictionary & 14 Standard Curve Classifications | 5d | 2026-08-03 | 2026-08-07 | 8 | 100% |
| 13 |  | Wireline Curve Anomaly Classification & Root Cause Engine | 5d | 2026-08-06 | 2026-08-12 | 12 | 100% |
| 14 |  | File Upload UI with Drag-and-Drop & Pre-Validation | 5d | 2026-08-07 | 2026-08-13 | 11 | 100% |
| 15 |  | Vercel Preview Deployments & DB Migration Automation | 10d | 2026-08-03 | 2026-08-14 | 8 | 100% |
| 16 |  | Milestone: Authenticated Ingestion & Mnemonic Baseline | 0d | 2026-08-14 | 2026-08-14 | 10, 11, 13, 14, 15 | 100% |
| 17 | 1.3 | **Sprint 3: Core Engine, Quality Scoring & Ingestion Workspace** | 10d | 2026-08-17 | 2026-08-28 | 16 | 100% |
| 18 |  | Multi-Factor Quality Scoring Algorithm (Completeness/Integrity/Noise) | 5d | 2026-08-17 | 2026-08-21 | 16 | 100% |
| 19 |  | Upload Workspace Redesign & Modular Tabbed Layout | 5d | 2026-08-18 | 2026-08-24 | 16 | 100% |
| 20 |  | Subsurface Basin Analytics & KPI Dashboard Aggregations | 5d | 2026-08-19 | 2026-08-25 | 18 | 100% |
| 21 |  | Automated PDF Audit Report Generator | 5d | 2026-08-21 | 2026-08-27 | 18 | 100% |
| 22 |  | Atomic Transaction Ingestion Pipeline & Downsampling | 5d | 2026-08-20 | 2026-08-26 | 18 | 100% |
| 23 |  | Milestone: Complete Quality Scoring & PDF Audit Capability | 0d | 2026-08-28 | 2026-08-28 | 18, 19, 20, 21, 22 | 100% |
| 24 | 1.4 | **Sprint 4: Advanced Visualisation, Imputation & Python Migration** | 10d | 2026-08-31 | 2026-09-11 | 23 | 100% |
| 25 |  | FastAPI Microservice Migration & Native NumPy/Pandas Stack | 6d | 2026-08-31 | 2026-09-07 | 23 | 100% |
| 26 |  | SVG Multi-Track Wireline Log Viewer with Depth Sync | 6d | 2026-09-01 | 2026-09-08 | 23 | 100% |
| 27 |  | Custom Mnemonic Aliases & Tenant Rule Management | 5d | 2026-09-02 | 2026-09-08 | 25 | 100% |
| 28 |  | Imputation Algorithm Benchmark (KNN, Spline, Iterative SVD) | 5d | 2026-09-03 | 2026-09-09 | 25 | 100% |
| 29 |  | Zero-Mock Clean Seeder & Performance Load Testing | 5d | 2026-09-04 | 2026-09-10 | 25 | 100% |
| 30 |  | Milestone: Unified Python Backend & Interactive Log Viewer | 0d | 2026-09-11 | 2026-09-11 | 25, 26, 27, 28, 29 | 100% |
| 31 | 1.5 | **Sprint 5: Security Hardening, Default-to-Deny RBAC & Admin Tools** | 10d | 2026-09-14 | 2026-09-25 | 30 | 100% |
| 32 |  | Server-Side RBAC Enforcement & Ghost Token Elimination | 5d | 2026-09-14 | 2026-09-18 | 30 | 100% |
| 33 |  | Self-Registration Role Escalation Block (403 on ADMIN role) | 4d | 2026-09-16 | 2026-09-21 | 32 | 100% |
| 34 |  | Interactive Admin Management CLI (`manage_admin.py`) | 4d | 2026-09-17 | 2026-09-22 | 32 | 100% |
| 35 |  | Admin Panel UI with Tabbed User Management & Tokens | 5d | 2026-09-18 | 2026-09-24 | 33 | 100% |
| 36 |  | Automated Security Test Suite (14 Tests in `test_admin_auth.py`) | 5d | 2026-09-21 | 2026-09-25 | 33 | 100% |
| 37 |  | Milestone: Default-to-Deny Security & Administrative Center | 0d | 2026-09-25 | 2026-09-25 | 32, 33, 34, 35, 36 | 100% |
| 38 | 1.6 | **Sprint 6: Production Hardening & Quality Engine 12-Item Overhaul** | 10d | 2026-09-28 | 2026-10-09 | 37 | 100% |
| 39 |  | Item 1-2: Per-Row Anomaly Approvals & Specific Method Routing | 5d | 2026-09-28 | 2026-10-02 | 37 | 100% |
| 40 |  | Item 3: AUTO Imputation Gap Ranking via Cross-Validation | 5d | 2026-09-29 | 2026-10-05 | 39 | 100% |
| 41 |  | Item 4: Impossible Values Action Suite (Remove / Clip / Delete Row) | 5d | 2026-09-30 | 2026-10-06 | 39 | 100% |
| 42 |  | Item 5: Long Null Cluster Guards & Unfillable Flag Boundaries | 4d | 2026-10-01 | 2026-10-06 | 40 | 100% |
| 43 |  | Item 6-7: Duplicate Depth Prune & 2-Point Neighbour Despiking | 4d | 2026-10-02 | 2026-10-07 | 41 | 100% |
| 44 |  | Item 8-9: Real Change Report Telemetry & Audit Certificate ID | 4d | 2026-10-05 | 2026-10-08 | 42, 43 | 100% |
| 45 |  | Item 10-12: Staged Non-Destructive QA UI & Cleaned Export Suite | 5d | 2026-10-05 | 2026-10-09 | 39 | 100% |
| 46 |  | Sliding-Window IP Rate Limiter & Security Stabilization | 5d | 2026-09-28 | 2026-10-02 | 37 | 100% |
| 47 |  | Milestone: Certified Quality Engine Overhaul & Audit Pipeline | 0d | 2026-10-09 | 2026-10-09 | 39, 40, 41, 42, 43, 44, 45, 46 | 100% |
| 48 | 1.7 | **Sprint 7: Multi-Well Comparison, NUPRC Compliance & Batch Processing** | 10d | 2026-10-12 | 2026-10-23 | 47 | 88% |
| 49 |  | Multi-Well Depth Alignment & Correlation Engine (SE1) | 5d | 2026-10-12 | 2026-10-16 | 47 | 100% |
| 50 |  | Cross-Well Canvas UI with Synchronized Depth Scrolling (SE2) | 5d | 2026-10-13 | 2026-10-19 | 49 | 95% |
| 51 |  | Unsupervised ML Lithology Classification on GR-RHOB-NPHI (SE1) | 4d | 2026-10-15 | 2026-10-20 | 49 | 85% |
| 52 |  | NUPRC Compliance Report Template & Digital Signatures (SE2, DA4) | 5d | 2026-10-14 | 2026-10-20 | 47 | 90% |
| 53 |  | Niger Delta Formation Cutoffs (Akata, Agbada, Benin) (DA1, DA2) | 5d | 2026-10-12 | 2026-10-16 | 47 | 100% |
| 54 |  | Offset Niger Delta Demonstration Well Package Curation (DA3) | 5d | 2026-10-13 | 2026-10-19 | 53 | 95% |
| 55 |  | Asynchronous Batch Ingestion Background Workers & Live Progress (CE1) | 6d | 2026-10-14 | 2026-10-21 | 47 | 85% |
| 56 |  | Outbound Webhook Event Dispatcher for Cloud Storage Sync (CE2) | 6d | 2026-10-15 | 2026-10-22 | 47 | 80% |
| 57 |  | End-to-End System Integration & Acceptance Testing Suite (All) | 5d | 2026-10-19 | 2026-10-23 | 50, 51, 52, 54, 55, 56 | 95% |
| 58 |  | Milestone: Final Production Platform Release & NUPRC Audit Readiness | 0d | 2026-10-23 | 2026-10-23 | 57 | 75% |

## Version 2 (saved 2026-10-29, file wellqc_project_schedule.mpp)

Note of the change: chore: remove wellqc project schedule mpp document

Last finish 2026-10-23 → 2026-11-02 (+10d).

Changed:

| ID | Task | Start | Finish | Duration | Complete | Total float |
| --- | --- | --- | --- | --- | --- | --- |
| 1 | **WellQC Platform Development** | 2026-07-20 A | 2026-10-23 → 2026-11-02 (+10d) | 70d → 76d | 98% → 83% | none → 0d |
| 2 | **Sprint 1: Discovery, Architecture & Core Stack** | 2026-07-20 A | 2026-07-31 A |  |  |  |
| 3 | Petrophysical Domain Modeling & Curve Physical Limits | 2026-07-20 A | 2026-07-24 → 2026-07-20 A (-4d) | 5d → 0d |  |  |
| 4 | LAS 2.0 Parser Engine & Line Splitter Validation | 2026-07-22 A | 2026-07-29 A |  |  |  |
| 5 | Next.js 15 App Shell, Navigation & Design System | 2026-07-20 A | 2026-07-28 → 2026-07-20 A (-8d) | 7d → 0d |  |  |
| 6 | Database Schema Design & Prisma Setup | 2026-07-22 A | 2026-07-30 A |  |  |  |
| 7 | CI/CD Pipeline Setup & Repository Governance | 2026-07-20 A | 2026-07-25 → 2026-07-20 A (-5d) | 5d → 0d |  |  |
| 8 | Milestone: Core Architecture & Ingestion Proof-of-Concept | 2026-07-31 A | 2026-07-31 A | 0d → 1d |  |  |
| 9 | **Sprint 2: Foundation, Auth & Multi-Tenant Database** | 2026-08-03 A | 2026-08-14 A |  |  |  |
| 10 | Multi-Tenant PostgreSQL Architecture on Neon | 2026-08-03 A | 2026-08-07 A |  |  |  |
| 11 | Authentication Engine, Session Tokens & Scrypt Hashing | 2026-08-05 A | 2026-08-11 A |  |  |  |
| 12 | Mnemonic Dictionary & 14 Standard Curve Classifications | 2026-08-03 A | 2026-08-07 A |  |  |  |
| 13 | Wireline Curve Anomaly Classification & Root Cause Engine | 2026-08-06 A | 2026-08-12 A |  |  |  |
| 14 | File Upload UI with Drag-and-Drop & Pre-Validation | 2026-08-07 A | 2026-08-13 A |  |  |  |
| 15 | Vercel Preview Deployments & DB Migration Automation | 2026-08-03 A | 2026-08-14 A |  |  |  |
| 16 | Milestone: Authenticated Ingestion & Mnemonic Baseline | 2026-08-14 A | 2026-08-14 A | 0d → 1d |  |  |
| 17 | **Sprint 3: Core Engine, Quality Scoring & Ingestion Workspace** | 2026-08-17 A | 2026-08-28 A |  |  |  |
| 18 | Multi-Factor Quality Scoring Algorithm (Completeness/Integrity/Noise) | 2026-08-17 A | 2026-08-21 A |  |  |  |
| 19 | Upload Workspace Redesign & Modular Tabbed Layout | 2026-08-18 A | 2026-08-24 A |  |  |  |
| 20 | Subsurface Basin Analytics & KPI Dashboard Aggregations | 2026-08-19 A | 2026-08-25 A |  |  |  |
| 21 | Automated PDF Audit Report Generator | 2026-08-21 A | 2026-08-27 A |  |  |  |
| 22 | Atomic Transaction Ingestion Pipeline & Downsampling | 2026-08-20 A | 2026-08-26 A |  |  |  |
| 23 | Milestone: Complete Quality Scoring & PDF Audit Capability | 2026-08-28 A | 2026-08-28 A | 0d → 1d |  |  |
| 24 | **Sprint 4: Advanced Visualisation, Imputation & Python Migration** | 2026-08-31 A | 2026-09-11 A |  |  |  |
| 25 | FastAPI Microservice Migration & Native NumPy/Pandas Stack | 2026-08-31 A | 2026-09-07 A |  |  |  |
| 26 | SVG Multi-Track Wireline Log Viewer with Depth Sync | 2026-09-01 A | 2026-09-08 A |  |  |  |
| 27 | Custom Mnemonic Aliases & Tenant Rule Management | 2026-09-02 A | 2026-09-08 A |  |  |  |
| 28 | Imputation Algorithm Benchmark (KNN, Spline, Iterative SVD) | 2026-09-03 A | 2026-09-09 A |  |  |  |
| 29 | Zero-Mock Clean Seeder & Performance Load Testing | 2026-09-04 A | 2026-09-10 A |  |  |  |
| 30 | Milestone: Unified Python Backend & Interactive Log Viewer | 2026-09-11 A | 2026-09-11 A | 0d → 1d |  |  |
| 31 | **Sprint 5: Security Hardening, Default-to-Deny RBAC & Admin Tools** | 2026-09-14 A | 2026-09-25 A |  |  |  |
| 32 | Server-Side RBAC Enforcement & Ghost Token Elimination | 2026-09-14 A | 2026-09-18 A |  |  |  |
| 33 | Self-Registration Role Escalation Block (403 on ADMIN role) | 2026-09-16 A | 2026-09-21 A |  |  |  |
| 34 | Interactive Admin Management CLI (`manage_admin.py`) | 2026-09-17 A | 2026-09-22 A |  |  |  |
| 35 | Admin Panel UI with Tabbed User Management & Tokens | 2026-09-18 A | 2026-09-24 A |  |  |  |
| 36 | Automated Security Test Suite (14 Tests in `test_admin_auth.py`) | 2026-09-21 A | 2026-09-25 A |  |  |  |
| 37 | Milestone: Default-to-Deny Security & Administrative Center | 2026-09-25 A | 2026-09-25 A | 0d → 1d |  |  |
| 38 | **Sprint 6: Production Hardening & Quality Engine 12-Item Overhaul** | 2026-09-28 A | 2026-10-09 A |  |  |  |
| 39 | Item 1-2: Per-Row Anomaly Approvals & Specific Method Routing | 2026-09-28 A | 2026-10-02 A |  |  |  |
| 40 | Item 3: AUTO Imputation Gap Ranking via Cross-Validation | 2026-09-29 A | 2026-10-05 A |  |  |  |
| 41 | Item 4: Impossible Values Action Suite (Remove / Clip / Delete Row) | 2026-09-30 A | 2026-10-06 A |  |  |  |
| 42 | Item 5: Long Null Cluster Guards & Unfillable Flag Boundaries | 2026-10-01 A | 2026-10-06 A |  |  |  |
| 43 | Item 6-7: Duplicate Depth Prune & 2-Point Neighbour Despiking | 2026-10-02 A | 2026-10-07 A |  |  |  |
| 44 | Item 8-9: Real Change Report Telemetry & Audit Certificate ID | 2026-10-05 A | 2026-10-08 A |  |  |  |
| 45 | Item 10-12: Staged Non-Destructive QA UI & Cleaned Export Suite | 2026-10-05 A | 2026-10-09 A |  |  |  |
| 46 | Sliding-Window IP Rate Limiter & Security Stabilization | 2026-09-28 A | 2026-10-02 A |  |  |  |
| 47 | Milestone: Certified Quality Engine Overhaul & Audit Pipeline | 2026-10-09 A | 2026-10-09 A | 0d → 1d |  |  |
| 48 | **Sprint 7: Multi-Well Comparison, NUPRC Compliance & Batch Processing** | 2026-10-12 A | 2026-10-23 → 2026-11-02 (+10d) | 10d → 16d | 88% → 21% | none → 0d |
| 49 | Multi-Well Depth Alignment & Correlation Engine (SE1) | 2026-10-12 A | 2026-10-16 A |  |  |  |
| 50 | Cross-Well Canvas UI with Synchronized Depth Scrolling (SE2) | 2026-10-13 → 2026-10-19 (+6d) | 2026-10-19 → 2026-10-23 (+4d) |  | 95% → 0% | none → 0d |
| 51 | Unsupervised ML Lithology Classification on GR-RHOB-NPHI (SE1) | 2026-10-15 → 2026-10-19 (+4d) | 2026-10-20 → 2026-10-22 (+2d) |  | 85% → 0% | none → 1d |
| 52 | NUPRC Compliance Report Template & Digital Signatures (SE2, DA4) | 2026-10-14 → 2026-10-12 (-2d) | 2026-10-20 → 2026-10-16 (-4d) |  | 90% → 0% | none → 5d |
| 53 | Niger Delta Formation Cutoffs (Akata, Agbada, Benin) (DA1, DA2) | 2026-10-12 A | 2026-10-16 A |  |  |  |
| 54 | Offset Niger Delta Demonstration Well Package Curation (DA3) | 2026-10-13 → 2026-10-19 (+6d) | 2026-10-19 → 2026-10-23 (+4d) |  | 95% → 0% | none → 0d |
| 55 | Asynchronous Batch Ingestion Background Workers & Live Progress (CE1) | 2026-10-14 → 2026-10-12 (-2d) | 2026-10-21 → 2026-10-19 (-2d) |  | 85% → 0% | none → 4d |
| 56 | Outbound Webhook Event Dispatcher for Cloud Storage Sync (CE2) | 2026-10-15 → 2026-10-12 (-3d) | 2026-10-22 → 2026-10-19 (-3d) |  | 80% → 0% | none → 4d |
| 57 | End-to-End System Integration & Acceptance Testing Suite (All) | 2026-10-19 → 2026-10-26 (+7d) | 2026-10-23 → 2026-10-30 (+7d) |  | 95% → 0% | none → 0d |
| 58 | Milestone: Final Production Platform Release & NUPRC Audit Readiness | 2026-10-23 → 2026-11-02 (+10d) | 2026-10-23 → 2026-11-02 (+10d) | 0d → 1d | 75% → 0% | none → 0d |

## Version 3 (saved 2026-10-29, file wellqc_project_schedule.xml)

Note of the change: Merge pull request #92 from 8GUYS/dev

Last finish 2026-11-02 → 2026-11-27 (+25d). Complete tasks 42 → 53.

Added:

| ID | Task | Duration | Start | Finish | Predecessors |
| --- | --- | --- | --- | --- | --- |
| 59 | Subsurface Basin Analytics Engine & Real-Time Visualization API (DA3, SE2) | 4d | 2026-10-23 | 2026-10-28 | 54 |
| 60 | End-to-End System Test Suite (125 Pytest + 38 Jest Passing) (All) | 5d | 2026-10-24 | 2026-10-29 | 57, 58, 59 |
| 61 | Milestone: Multi-Well Platform, Dynamic Workstation & Core Feature Complete | 0d | 2026-10-29 | 2026-10-29 | 60 |
| 62 | **Sprint 8: Production Deployment, NUPRC Operator Pilot & Cloud Scale** | 10d | 2026-11-02 | 2026-11-13 | 61 |
| 63 | Multi-Region Cloud Deployment & Kubernetes Orchestration (CE1) | 5d | 2026-11-02 | 2026-11-06 | 61 |
| 64 | Live NUPRC Operator Pilot Program & Formal Submission Validation (DA4, SE2) | 6d | 2026-11-03 | 2026-11-10 | 61 |
| 65 | Real-Time Wellsite Telemetry Streaming Ingestion (WITSML / OPC-UA) (SE1, CE2) | 6d | 2026-11-04 | 2026-11-11 | 63 |
| 66 | Advanced Reservoir Rock Physics Module (Sw, Permeability, Net-to-Gross) (DA1, DA2) | 5d | 2026-11-05 | 2026-11-11 | 61 |
| 67 | Enterprise SSO Integration (SAML 2.0 / Azure AD / Okta) & Audit Access Logs (CE2, SE2) | 5d | 2026-11-06 | 2026-11-12 | 63 |
| 68 | Offset Well Basin Correlation ML Enhancement (DA3, SE1) | 5d | 2026-11-09 | 2026-11-13 | 66 |
| 69 | Milestone: Production Release & NUPRC Pilot Sign-off (All) | 0d | 2026-11-13 | 2026-11-13 | 63, 64, 65, 66, 67, 68 |
| 70 | **Sprint 9: Enterprise Scale, Real-Time Analytics & Hypercare Operational Handoff** | 10d | 2026-11-16 | 2026-11-27 | 69 |
| 71 | High-Availability Multi-AZ Database Clustering & Disaster Recovery (CE2) | 5d | 2026-11-16 | 2026-11-20 | 69 |
| 72 | Automated Periodic AI Model Drift Detection & Petrophysical Re-calibration (SE1, DA2) | 5d | 2026-11-17 | 2026-11-23 | 69 |
| 73 | 24/7 SLI/SLO Telemetry Observability, Prometheus Metrics & Alerting (CE1) | 5d | 2026-11-18 | 2026-11-24 | 71 |
| 74 | Enterprise User Training Portal, API Knowledge Base & Interactive Video Guides (DA3, DA4, SE2) | 6d | 2026-11-19 | 2026-11-26 | 69 |
| 75 | Client Acceptance Review & Regulatory Compliance Handoff (DA4, CE2) | 5d | 2026-11-23 | 2026-11-27 | 73, 74 |
| 76 | Milestone: Enterprise General Availability (GA) & Steady-State SLAs (All) | 0d | 2026-11-27 | 2026-11-27 | 71, 72, 73, 74, 75 |

Changed:

| ID | Task | Start | Finish | Duration | Complete | Total float | Predecessors | Other |
| --- | --- | --- | --- | --- | --- | --- | --- | --- |
| 1 | **WellQC Platform Development** | 2026-07-20 A → 2026-07-20 | 2026-11-02 → 2026-11-27 (+25d) | 76d → 90d | 83% → 78% | 0d → none |  |  |
| 2 | **Sprint 1: Discovery, Architecture & Core Stack** | 2026-07-20 A → 2026-07-20 | 2026-07-31 A → 2026-07-31 |  |  |  |  |  |
| 3 | Petrophysical Domain Modeling & Curve Physical Limits | 2026-07-20 A → 2026-07-20 | 2026-07-20 A → 2026-07-24 (+4d) | 0d → 5d |  |  |  |  |
| 4 | LAS 2.0 Parser Engine & Line Splitter Validation | 2026-07-22 A → 2026-07-22 | 2026-07-29 A → 2026-07-29 |  |  |  |  |  |
| 5 | Next.js 15 App Shell, Navigation & Design System | 2026-07-20 A → 2026-07-20 | 2026-07-20 A → 2026-07-28 (+8d) | 0d → 7d |  |  |  |  |
| 6 | Database Schema Design & Prisma Setup | 2026-07-22 A → 2026-07-22 | 2026-07-30 A → 2026-07-30 |  |  |  |  |  |
| 7 | CI/CD Pipeline Setup & Repository Governance | 2026-07-20 A → 2026-07-20 | 2026-07-20 A → 2026-07-25 (+5d) | 0d → 5d |  |  |  |  |
| 8 | Milestone: Core Architecture & Ingestion Proof-of-Concept | 2026-07-31 A → 2026-07-31 | 2026-07-31 A → 2026-07-31 | 1d → 0d |  |  |  |  |
| 9 | **Sprint 2: Foundation, Auth & Multi-Tenant Database** | 2026-08-03 A → 2026-08-03 | 2026-08-14 A → 2026-08-14 |  |  |  |  |  |
| 10 | Multi-Tenant PostgreSQL Architecture on Neon | 2026-08-03 A → 2026-08-03 | 2026-08-07 A → 2026-08-07 |  |  |  |  |  |
| 11 | Authentication Engine, Session Tokens & Scrypt Hashing | 2026-08-05 A → 2026-08-05 | 2026-08-11 A → 2026-08-11 |  |  |  |  |  |
| 12 | Mnemonic Dictionary & 14 Standard Curve Classifications | 2026-08-03 A → 2026-08-03 | 2026-08-07 A → 2026-08-07 |  |  |  |  |  |
| 13 | Wireline Curve Anomaly Classification & Root Cause Engine | 2026-08-06 A → 2026-08-06 | 2026-08-12 A → 2026-08-12 |  |  |  |  |  |
| 14 | File Upload UI with Drag-and-Drop & Pre-Validation | 2026-08-07 A → 2026-08-07 | 2026-08-13 A → 2026-08-13 |  |  |  |  |  |
| 15 | Vercel Preview Deployments & DB Migration Automation | 2026-08-03 A → 2026-08-03 | 2026-08-14 A → 2026-08-14 |  |  |  |  |  |
| 16 | Milestone: Authenticated Ingestion & Mnemonic Baseline | 2026-08-14 A → 2026-08-14 | 2026-08-14 A → 2026-08-14 | 1d → 0d |  |  |  |  |
| 17 | **Sprint 3: Core Engine, Quality Scoring & Ingestion Workspace** | 2026-08-17 A → 2026-08-17 | 2026-08-28 A → 2026-08-28 |  |  |  |  |  |
| 18 | Multi-Factor Quality Scoring Algorithm (Completeness/Integrity/Noise) | 2026-08-17 A → 2026-08-17 | 2026-08-21 A → 2026-08-21 |  |  |  |  |  |
| 19 | Upload Workspace Redesign & Modular Tabbed Layout | 2026-08-18 A → 2026-08-18 | 2026-08-24 A → 2026-08-24 |  |  |  |  |  |
| 20 | Subsurface Basin Analytics & KPI Dashboard Aggregations | 2026-08-19 A → 2026-08-19 | 2026-08-25 A → 2026-08-25 |  |  |  |  |  |
| 21 | Automated PDF Audit Report Generator | 2026-08-21 A → 2026-08-21 | 2026-08-27 A → 2026-08-27 |  |  |  |  |  |
| 22 | Atomic Transaction Ingestion Pipeline & Downsampling | 2026-08-20 A → 2026-08-20 | 2026-08-26 A → 2026-08-26 |  |  |  |  |  |
| 23 | Milestone: Complete Quality Scoring & PDF Audit Capability | 2026-08-28 A → 2026-08-28 | 2026-08-28 A → 2026-08-28 | 1d → 0d |  |  |  |  |
| 24 | **Sprint 4: Advanced Visualisation, Imputation & Python Migration** | 2026-08-31 A → 2026-08-31 | 2026-09-11 A → 2026-09-11 |  |  |  |  |  |
| 25 | FastAPI Microservice Migration & Native NumPy/Pandas Stack | 2026-08-31 A → 2026-08-31 | 2026-09-07 A → 2026-09-07 |  |  |  |  |  |
| 26 | SVG Multi-Track Wireline Log Viewer with Depth Sync | 2026-09-01 A → 2026-09-01 | 2026-09-08 A → 2026-09-08 |  |  |  |  |  |
| 27 | Custom Mnemonic Aliases & Tenant Rule Management | 2026-09-02 A → 2026-09-02 | 2026-09-08 A → 2026-09-08 |  |  |  |  |  |
| 28 | Imputation Algorithm Benchmark (KNN, Spline, Iterative SVD) | 2026-09-03 A → 2026-09-03 | 2026-09-09 A → 2026-09-09 |  |  |  |  |  |
| 29 | Zero-Mock Clean Seeder & Performance Load Testing | 2026-09-04 A → 2026-09-04 | 2026-09-10 A → 2026-09-10 |  |  |  |  |  |
| 30 | Milestone: Unified Python Backend & Interactive Log Viewer | 2026-09-11 A → 2026-09-11 | 2026-09-11 A → 2026-09-11 | 1d → 0d |  |  |  |  |
| 31 | **Sprint 5: Security Hardening, Default-to-Deny RBAC & Admin Tools** | 2026-09-14 A → 2026-09-14 | 2026-09-25 A → 2026-09-25 |  |  |  |  |  |
| 32 | Server-Side RBAC Enforcement & Ghost Token Elimination | 2026-09-14 A → 2026-09-14 | 2026-09-18 A → 2026-09-18 |  |  |  |  |  |
| 33 | Self-Registration Role Escalation Block (403 on ADMIN role) | 2026-09-16 A → 2026-09-16 | 2026-09-21 A → 2026-09-21 |  |  |  |  |  |
| 34 | Interactive Admin Management CLI (`manage_admin.py`) | 2026-09-17 A → 2026-09-17 | 2026-09-22 A → 2026-09-22 |  |  |  |  |  |
| 35 | Admin Panel UI with Tabbed User Management & Tokens | 2026-09-18 A → 2026-09-18 | 2026-09-24 A → 2026-09-24 |  |  |  |  |  |
| 36 | Automated Security Test Suite (14 Tests in `test_admin_auth.py`) | 2026-09-21 A → 2026-09-21 | 2026-09-25 A → 2026-09-25 |  |  |  |  |  |
| 37 | Milestone: Default-to-Deny Security & Administrative Center | 2026-09-25 A → 2026-09-25 | 2026-09-25 A → 2026-09-25 | 1d → 0d |  |  |  |  |
| 38 | **Sprint 6: Production Hardening & Quality Engine 12-Item Overhaul** | 2026-09-28 A → 2026-09-28 | 2026-10-09 A → 2026-10-09 |  |  |  |  |  |
| 39 | Item 1-2: Per-Row Anomaly Approvals & Specific Method Routing | 2026-09-28 A → 2026-09-28 | 2026-10-02 A → 2026-10-02 |  |  |  |  |  |
| 40 | Item 3: AUTO Imputation Gap Ranking via Cross-Validation | 2026-09-29 A → 2026-09-29 | 2026-10-05 A → 2026-10-05 |  |  |  |  |  |
| 41 | Item 4: Impossible Values Action Suite (Remove / Clip / Delete Row) | 2026-09-30 A → 2026-09-30 | 2026-10-06 A → 2026-10-06 |  |  |  |  |  |
| 42 | Item 5: Long Null Cluster Guards & Unfillable Flag Boundaries | 2026-10-01 A → 2026-10-01 | 2026-10-06 A → 2026-10-06 |  |  |  |  |  |
| 43 | Item 6-7: Duplicate Depth Prune & 2-Point Neighbour Despiking | 2026-10-02 A → 2026-10-02 | 2026-10-07 A → 2026-10-07 |  |  |  |  |  |
| 44 | Item 8-9: Real Change Report Telemetry & Audit Certificate ID | 2026-10-05 A → 2026-10-05 | 2026-10-08 A → 2026-10-08 |  |  |  |  |  |
| 45 | Item 10-12: Staged Non-Destructive QA UI & Cleaned Export Suite | 2026-10-05 A → 2026-10-05 | 2026-10-09 A → 2026-10-09 |  |  |  |  |  |
| 46 | Sliding-Window IP Rate Limiter & Security Stabilization | 2026-09-28 A → 2026-09-28 | 2026-10-02 A → 2026-10-02 |  |  |  |  |  |
| 47 | Milestone: Certified Quality Engine Overhaul & Audit Pipeline | 2026-10-09 A → 2026-10-09 | 2026-10-09 A → 2026-10-09 | 1d → 0d |  |  |  |  |
| 48 | **Sprint 7: Multi-Well Comparison, Dynamic Workstation & UX Enhancements** | 2026-10-12 A → 2026-10-12 | 2026-11-02 → 2026-10-29 (-4d) | 16d → 14d | 21% → 100% | 0d → none |  | was named Sprint 7: Multi-Well Comparison, NUPRC Compliance & Batch Processing |
| 49 | Multi-Well Depth Alignment & Stratigraphic Correlation Engine (SE1) | 2026-10-12 A → 2026-10-12 | 2026-10-16 A → 2026-10-16 |  |  |  |  | was named Multi-Well Depth Alignment & Correlation Engine (SE1) |
| 50 | Cross-Well Workstation UI & Interactive SVG Overlaid Track (SE2) | 2026-10-19 → 2026-10-13 (-6d) | 2026-10-23 → 2026-10-19 (-4d) |  | 0% → 100% | 0d → none |  | was named Cross-Well Canvas UI with Synchronized Depth Scrolling (SE2) |
| 51 | Unsupervised ML Lithology Clustering on GR-RHOB-NPHI (SE1, DA2) | 2026-10-19 → 2026-10-15 (-4d) | 2026-10-22 → 2026-10-20 (-2d) |  | 0% → 100% | 1d → none |  | was named Unsupervised ML Lithology Classification on GR-RHOB-NPHI (SE1) |
| 52 | NUPRC Compliance Report Template & Digital Signatures (SE2, DA4) | 2026-10-12 → 2026-10-14 (+2d) | 2026-10-16 → 2026-10-20 (+4d) |  | 0% → 100% | 5d → none |  |  |
| 53 | Niger Delta Formation Cutoffs & Hybrid Markers DB Schema (DA1, CE2) | 2026-10-12 A → 2026-10-12 | 2026-10-16 A → 2026-10-16 |  |  |  |  | was named Niger Delta Formation Cutoffs (Akata, Agbada, Benin) (DA1, DA2) |
| 54 | Offset Niger Delta Demonstration Well Package Curation (DA3) | 2026-10-19 → 2026-10-13 (-6d) | 2026-10-23 → 2026-10-19 (-4d) |  | 0% → 100% | 0d → none |  |  |
| 55 | Asynchronous Batch Ingestion Background Workers & Live Progress (CE1) | 2026-10-12 → 2026-10-14 (+2d) | 2026-10-19 → 2026-10-21 (+2d) |  | 0% → 100% | 4d → none |  |  |
| 56 | Outbound Webhook Event Dispatcher for Cloud Storage Sync (CE2) | 2026-10-12 → 2026-10-15 (+3d) | 2026-10-19 → 2026-10-22 (+3d) |  | 0% → 100% | 4d → none |  |  |
| 57 | Dynamic Multi-Curve Wireline Log Viewer & Channel Selector (SE1, SE2) | 2026-10-26 → 2026-10-20 (-6d) | 2026-10-30 → 2026-10-26 (-4d) |  | 0% → 100% | 0d → none | 50, 51, 52, 54, 55, 56 → 50 | was named End-to-End System Integration & Acceptance Testing Suite (All) |
| 58 | Interactive Dashboard Onboarding Tour Guide & Spotlight Walkthrough (SE2) | 2026-11-02 → 2026-10-22 (-11d) | 2026-11-02 → 2026-10-27 (-6d) | 1d → 4d | 0% → 100% | 0d → none | 57 → 50 | was named Milestone: Final Production Platform Release & NUPRC Audit Readiness |
